# Gantt_ProjetDiscret

Schedule from MS Project, 2015-10-19 to 2016-03-18, status date 2016-01-21, 7 hours a day, costs in €, A marks actual dates.
UFR-SFA

## Calendars

- Standard: Mon-Fri 09:00-12:00, 14:00-18:00; Sat-Sun off. Exceptions (off unless hours are given): 2015-11-02 to 2015-11-13 (Cours 02/11 - 13/11), 2015-11-23 to 2015-12-11 (Cours 23/11 - 11/12), 2015-12-25 to 2016-01-01 (Vacances), 2016-01-04 to 2016-01-15 (Cours 04/01 - 15/01), 2016-02-01 to 2016-02-12 (Cours 01/02 - 12/02), 2016-02-29 to 2016-03-04 (Cours 29/02 - 04/03).

## Resources

| Resource | Rate |
| --- | --- |
| Zied | 21.43 |
| Thomas | 21.43 |
| Adrien | 21.43 |
| Lydie | 21.43 |

## Schedule

| ID | WBS | Task | Type | Duration | Start | Finish | Predecessors | Complete | Remaining | Total slack | Free slack | Constraint | Resources | Work | Actual work | Cost | Actual cost |
| --- | --- | --- | --- | --- | --- | --- | --- | --- | --- | --- | --- | --- | --- | --- | --- | --- | --- |
| 1 | 1 | A. Jalon début | milestone | 0d | 2015-10-19 A | 2015-10-19 A |  | 100% |  |  |  |  |  |  |  |  |  |
| 2 | 2 | 0. Rédaction cahier des charges |  | 10d | 2015-10-19 A | 2015-10-30 A | 1 | 100% |  |  |  |  | Adrien; Lydie; Thomas; Zied | 280h | 280h | 6,000 | 6,000 |
| 3 | 3 | B. Jalon début développement | milestone | 0d | 2015-10-30 A | 2015-10-30 A | 2 | 100% |  |  |  |  |  |  |  |  |  |
| 4 | 4 | 1. Documentation, aide utilisateur, tests |  | 34d | 2015-11-16 A | 2016-03-02 | 3 | 20% | 27.2d | 10d |  | finish no earlier than 2016-03-02 |  |  |  |  |  |
| 5 | 5 | **2. Conception** |  | 10d | 2015-11-16 A | 2015-12-18 A | 3 | 100% |  |  |  |  |  | 224h | 224h | 4,800 | 4,800 |
| 6 | 5.1 | 2.1 Etude du code |  | 2d | 2015-11-16 A | 2015-11-17 A | 3 | 100% |  |  |  |  | Adrien; Lydie; Thomas; Zied | 56h | 56h | 1,200 | 1,200 |
| 7 | 5.2 | 2.2 Conception de l'architecture |  | 4d | 2015-11-18 A | 2015-12-17 A | 6 | 100% |  |  |  |  | Adrien; Lydie; Thomas; Zied | 112h | 112h | 2,400 | 2,400 |
| 8 | 5.3 | 2.3 Refatoring |  | 2d | 2015-12-15 A | 2015-12-18 A | 7 | 100% |  |  |  |  | Adrien; Lydie; Thomas; Zied | 56h | 56h | 1,200 | 1,200 |
| 9 | 6 | C. Jalon Fin conception | milestone | 0d | 2015-12-18 | 2015-12-18 | 8, 5 |  |  | 4d | 0d |  |  |  |  |  |  |
| 10 | 7 | **3. Réalisation noyau minimal fonctionnel** |  | 8d | 2015-12-17 A | 2016-01-19 | 9 | 91% | 0.74d | 0d |  |  |  | 112h | 102.9h | 2,400 | 2,205 |
| 11 | 7.1 | 3.1 Transcription de l'algorithme |  | 1d | 2015-12-21 A | 2015-12-21 | 9 | 80% | 0.2d | 5d |  |  | Adrien; Lydie | 14h | 11.2h | 300 | 240 |
| 12 | 7.2 | 3.2 Rendu 3D |  | 5d | 2015-12-22 A | 2016-01-19 A | 11 | 100% |  |  |  |  | Adrien | 35h | 35h | 750 | 750 |
| 13 | 7.3 | 3.3 Implémentation des classes |  | 5d | 2015-12-17 A | 2016-01-18 | 9 | 84% | 0.82d | 1.25d |  | finish no earlier than 2015-12-21 | Lydie; Thomas | 63h | 56.7h | 1,350 | 1,215 |
| 14 | 8 | 3.4 Implémentation des classes | manual | 2d | 2016-01-25 | 2016-01-26 |  |  |  |  |  |  | Lydie; Thomas | 28h |  | 600 |  |
| 15 | 9 | **4. Interface minimale** |  | 4.8d | 2015-12-21 A | 2016-01-18 | 9 | 58% | 2d | 1.2d |  |  |  | 33.6h | 19.6h | 720 | 420 |
| 16 | 9.1 | 4.1 Développement espace 3D |  | 1.8d | 2015-12-21 A | 2015-12-22 A | 9 | 100% |  |  |  |  | Zied | 12.6h | 12.6h | 270 | 270 |
| 17 | 9.2 | 4.2 Développement espace 2D |  | 2d | 2015-12-22 | 2015-12-24 | 16 |  |  | 2.2d |  |  | Zied | 14h |  | 300 |  |
| 18 | 9.3 | 4.3 Menus (non liés) |  | 1d | 2015-12-24 A | 2016-01-18 A | 17 | 100% |  |  |  |  | Zied | 7h | 7h | 150 | 150 |
| 19 | 10 | D. Jalon Noyau fonctionnel minimal | milestone | 0d | 2016-01-19 | 2016-01-19 | 18, 12, 13, 10, 15 |  |  | 0d |  |  |  |  |  |  |  |
| 20 | 11 | **5. Amélioration IHM Choix des courbes** |  | 3d | 2016-01-20 | 2016-01-22 | 19 |  |  | 0d |  |  |  | 21h |  | 450 |  |
| 21 | 11.1 | 5.1 Choix des courbes |  | 1d | 2016-01-20 | 2016-01-20 | 19 |  |  | 0d |  |  | Zied | 7h |  | 150 |  |
| 22 | 11.2 | 5.2 Prise en compte des demandes |  | 2d | 2016-01-21 | 2016-01-22 | 21 |  |  | 0d |  |  | Zied | 14h |  | 300 |  |
| 23 | 12 | **6. Ajout fonctionnalités** |  | 3d | 2016-01-20 A | 2016-01-22 | 19 | 50% | 1.5d | 0d |  |  |  | 56h | 28h | 1,200 | 600 |
| 24 | 12.1 | 6.1 Ajout de méridiennes |  | 1.5d | 2016-01-20 A | 2016-01-21 | 19 | 50% | 0.75d | 0.75d | 0d |  | Lydie; Adrien | 21h | 10.5h | 450 | 225 |
| 25 | 12.2 | 6.2 Ajout de courbes de révolution |  | 1.5d | 2016-01-21 A | 2016-01-22 | 24 | 50% | 0.75d | 0d |  |  | Adrien; Lydie | 21h | 10.5h | 450 | 225 |
| 26 | 12.3 | 6.3 Plans et Coupes |  | 1d | 2016-01-20 | 2016-01-20 | 19 |  |  | 2d |  |  | Thomas | 7h |  | 150 |  |
| 27 | 12.4 | 6.4 Caméra |  | 1d | 2016-01-21 A | 2016-01-21 A | 26 | 100% |  |  |  |  | Thomas | 7h | 7h | 150 | 150 |
| 28 | 13 | E. Jalon Application minimale | milestone | 0d | 2016-01-22 | 2016-01-22 | 20, 23, 27, 22, 25 |  |  | 0d |  |  |  |  |  |  |  |

Notes:
- 4: Tâche générique, réalisée par tout les membres du groupes

| ID | WBS | Task | Type | Duration | Start | Finish | Predecessors | Total slack | Free slack | Constraint | Resources | Work | Cost |
| --- | --- | --- | --- | --- | --- | --- | --- | --- | --- | --- | --- | --- | --- |
| 29 | 14 | **7. Amélioration IHM Paramètres** |  | 6d | 2016-01-25 | 2016-02-15 | 28 | 0d |  |  |  | 42h | 900 |
| 30 | 14.1 | 7.1 Prise en compte des demandes |  | 2d | 2016-01-25 | 2016-01-26 | 28 | 0d |  |  | Zied | 14h | 300 |
| 31 | 14.2 | 7.2 Paramètres simples |  | 4d | 2016-01-27 | 2016-02-15 | 30 | 0d |  |  | Zied | 28h | 600 |
| 32 | 15 | **8. Dessin à main levée méridienne** |  | 4d | 2016-01-25 | 2016-01-28 | 28 | 2d |  |  |  | 56h | 1,200 |
| 33 | 15.1 | 8.1 Implémentation algorithme main levée |  | 1d | 2016-01-25 | 2016-01-25 | 28 | 2d | 0d |  | Lydie; Adrien | 14h | 300 |
| 34 | 15.2 | 8.2 Implantation dessin 2D |  | 2d | 2016-01-26 | 2016-01-27 | 33 | 2d | 0d |  | Lydie; Adrien | 28h | 600 |
| 35 | 15.3 | 8.3 Lien Dessin/Algorithme |  | 1d | 2016-01-28 | 2016-01-28 | 34 | 2d |  |  | Adrien; Lydie | 14h | 300 |
| 36 | 16 | F. Jalon Dessin main levée | milestone | 0d | 2016-02-15 | 2016-02-15 | 29, 32, 31, 35 | 0d |  |  |  |  |  |
| 37 | 17 | **9. Gestions de données** |  | 4d | 2016-02-16 | 2016-02-19 | 36 | 2d |  |  |  | 28h | 600 |
| 38 | 17.1 | 9.1 Export de l'espace 3D |  | 3d | 2016-02-16 | 2016-02-18 | 36 | 2d | 0d |  | Adrien | 21h | 450 |
| 39 | 17.2 | 9.2 Sauvegarde/Chargement des courbes |  | 1d | 2016-02-19 | 2016-02-19 | 38 | 2d |  |  | Thomas | 7h | 150 |
| 40 | 18 | **10. Amélioration de l'IHM Rentrer des formules** |  | 6d | 2016-02-16 | 2016-02-23 | 36 | 0d |  |  |  | 77h | 1,650 |
| 41 | 18.1 | 10.1 Prise en compte des demandes |  | 1d | 2016-02-16 | 2016-02-16 | 36 | 0d |  |  | Zied; Lydie | 14h | 300 |
| 42 | 18.2 | 10.2 Paramètres avancés |  | 4d | 2016-02-17 | 2016-02-22 | 41 | 1d |  |  | Zied | 28h | 600 |
| 43 | 18.3 | 10.3 Rentrer des formules |  | 5d | 2016-02-17 | 2016-02-23 | 41 | 0d |  |  | Lydie | 35h | 750 |
| 44 | 19 | G. Jalon Ajout de formules | milestone | 0d | 2016-02-23 | 2016-02-23 | 43, 37, 40, 39, 42 | 0d |  |  |  |  |  |
| 45 | 20 | 11. Ajout des courbes par l'utilisateur |  | 4d | 2016-02-24 | 2016-03-07 | 44 | 0d |  | finish no earlier than 2016-03-02 | Zied; Thomas; Adrien; Lydie | 112h | 2,400 |
| 46 | 21 | H. Jalon fin développement | milestone | 0d | 2016-03-07 | 2016-03-07 | 45 | 0d |  |  |  |  |  |
| 47 | 22 | 12. Rédaction rapport technique et finalisation documentation |  | 9d | 2016-03-08 | 2016-03-18 | 46 | 0d |  |  | Zied; Thomas; Adrien; Lydie | 252h | 5,400 |
| 48 | 23 | I. Jalon fin projet | milestone | 0d | 2016-03-18 | 2016-03-18 | 47, 4 | 0d |  |  |  |  |  |
